# WasteGone

Schedule from GanttProject, 2024-10-18 to 2024-12-13.
GIGA

## Calendars

- Project calendar: Mon-Fri working; Sat-Sun off.

## Resources

| Resource | Group |
| --- | --- |
| Francesco Paolo D'Antuono | Project Manager |
| Daniele Fabiano | Project Manager |
| Michela Palmieri | Team Member |
| Alessia Gatto | Team Member |
| Francesco Laudano | Team Member |
| Giovanni Croce | Team Member |
| Elisa Picilli | Team Member |
| Marco Iannuzzi | Team Member |
| Simon Carbone | Team Member |

## Schedule

| ID | WBS | Task | Duration | Start | Finish | Predecessors | Complete | Resources |
| --- | --- | --- | --- | --- | --- | --- | --- | --- |
| 1 | 1 | WasteGone Start | 1d | 2024-10-18 | 2024-10-18 |  | 100% |  |
| 2 | 2 | **RAD** | 14d | 2024-10-18 | 2024-11-06 | 1SS | 100% |  |
| 3 | 2.1 | Start Activities | 1d | 2024-10-18 | 2024-10-18 |  | 100% |  |
| 4 | 2.2 | **Raccolta dei Requisiti** | 6d | 2024-10-18 | 2024-10-25 |  | 100% |  |
| 5 | 2.2.1 | Introduzione | 3d | 2024-10-18 | 2024-10-22 | 3SS | 100% | Elisa Picilli [50%]; Simon Carbone [50%] |
| 6 | 2.2.2 | Sistema Attuale | 3d | 2024-10-18 | 2024-10-22 | 3SS | 100% | Giovanni Croce [50%]; Marco Iannuzzi [50%] |
| 7 | 2.2.3 | Sistema Proposto | 3d | 2024-10-18 | 2024-10-22 | 3SS | 100% | Michela Palmieri [33%]; Alessia Gatto [33%]; Francesco Laudano [34%] |
| 8 | 2.2.4 | Scenari | 2d | 2024-10-23 | 2024-10-24 | 7 | 100% | Michela Palmieri [14%]; Alessia Gatto [14%]; Francesco Laudano [14%]; Giovanni Croce [14%]; Elisa Picilli [14%]; Marco Iannuzzi [15%]; Simon Carbone [15%] |
| 9 | 2.2.5 | Casi D'Uso | 1d | 2024-10-25 | 2024-10-25 | 8 | 100% | Michela Palmieri [14%]; Alessia Gatto [14%]; Francesco Laudano [14%]; Giovanni Croce [14%]; Elisa Picilli [14%]; Marco Iannuzzi [15%]; Simon Carbone [15%] |
| 10 | 2.3 | **Analisi dei Requisiti** | 14d | 2024-10-18 | 2024-11-06 |  | 100% |  |
| 11 | 2.3.1 | Mock-up and Navigational Paths | 9d | 2024-10-25 | 2024-11-06 | 8 | 100% | Michela Palmieri [50%]; Giovanni Croce [50%] |
| 12 | 2.3.2 | Glossario | 14d | 2024-10-18 | 2024-11-06 | 5SS | 100% | Elisa Picilli [50%]; Marco Iannuzzi [50%] |
| 13 | 2.3.3 | Object Model | 6d | 2024-10-28 | 2024-11-04 | 9 | 100% | Alessia Gatto [33%]; Francesco Laudano [33%]; Simon Carbone [34%] |
| 14 | 2.3.4 | Dynamic Model | 2d | 2024-11-05 | 2024-11-06 | 13 | 100% | Michela Palmieri [14%]; Alessia Gatto [14%]; Francesco Laudano [15%]; Giovanni Croce [14%]; Elisa Picilli [14%]; Marco Iannuzzi [14%]; Simon Carbone [15%] |
| 15 | 3 | **SDD** | 5d | 2024-11-08 | 2024-11-14 | 2 | 100% |  |
| 16 | 3.1 | Introduzione | 3d | 2024-11-08 | 2024-11-12 | 11, 12, 14 | 100% | Alessia Gatto [50%]; Marco Iannuzzi [50%] |
| 17 | 3.2 | **Architettura Proposta** | 5d | 2024-11-08 | 2024-11-14 |  | 100% |  |
| 18 | 3.2.1 | Panoramica | 3d | 2024-11-08 | 2024-11-12 | 11, 12, 14 | 100% | Francesco Laudano [33%]; Giovanni Croce [33%]; Simon Carbone [34%] |
| 19 | 3.2.2 | Decomposizione in Sottosistemi | 3d | 2024-11-08 | 2024-11-12 | 11, 12, 14 | 100% | Francesco Laudano [34%]; Giovanni Croce [33%]; Simon Carbone [33%] |
| 20 | 3.2.3 | Hardware/Software Mapping | 2d | 2024-11-13 | 2024-11-14 | 19 | 100% | Michela Palmieri [50%]; Elisa Picilli [50%] |
| 21 | 3.2.4 | Gestione dei Dati Persistenti | 5d | 2024-11-08 | 2024-11-14 | 14 | 100% | Michela Palmieri [50%]; Elisa Picilli [50%] |
| 22 | 4 | **ODD** | 5d | 2024-11-15 | 2024-11-21 | 15 | 100% |  |
| 23 | 4.1 | Coding Conventions and Guidelines | 5d | 2024-11-15 | 2024-11-21 | 16, 18, 19, 20, 21 | 100% | Michela Palmieri [50%]; Francesco Laudano [50%] |
| 24 | 4.2 | Design Pattern | 5d | 2024-11-15 | 2024-11-21 | 16, 18, 19, 20, 21 | 100% | Marco Iannuzzi [50%]; Simon Carbone [50%] |
| 25 | 4.3 | Packages | 5d | 2024-11-15 | 2024-11-21 | 19 | 100% | Marco Iannuzzi [50%]; Simon Carbone [50%] |
| 26 | 4.4 | Class Interfaces | 5d | 2024-11-15 | 2024-11-21 | 16, 18, 19, 20, 21 | 100% | Alessia Gatto [34%]; Giovanni Croce [33%]; Elisa Picilli [33%] |

Notes:
- 7: Fino alla sezione 3.3 “Requisiti non funzionali” del template
- 8: Rispettare i vincoli, 2 scenari a testa.
- 9: Rispettare i vincoli, 1 caso d’uso a testa.
- 14: Rispettare i vincoli, 1 sequence diagram ogni due membri del team, Almeno un activity diagram per sistema esistente o sistema proposto e almeno uno statechart diagram ogni due membri del team. La somma degli activity e statechart diagram deve essere uguale al numero di membri del team diviso due.
- 16: Rispettare i vincoli, Specifica dei design goal e analisi dei trade-off relativi ad almeno due coppie di design goal.
- 19: Rispettare i vincoli, Definizione dell’architettura del sistema.
- 24: Rispettare i vincoli, Individuazione di due design pattern, indicandone l’obiettivo e come sarebbero implementati.
- 26: In questa parte bisogna solo definire quali saranno i tool che verranno utilizzati per la generazione delle interfacce (es., JavaDoc).

| ID | WBS | Task | Duration | Start | Finish | Predecessors | Complete | Resources |
| --- | --- | --- | --- | --- | --- | --- | --- | --- |
| 27 | 5 | **Implementazione** | 15d | 2024-11-22 | 2024-12-12 | 22 | 100% |  |
| 28 | 5.1 | Configurazione Ambiente di Sviluppo e Repository | 2d | 2024-11-22 | 2024-11-25 | 23, 24, 25, 26 | 100% | Michela Palmieri [14%]; Alessia Gatto [14%]; Francesco Laudano [14%]; Giovanni Croce [14%]; Elisa Picilli [15%]; Marco Iannuzzi [14%]; Simon Carbone [15%] |
| 29 | 5.2 | Suddivisione dei Packages | 2d | 2024-11-22 | 2024-11-25 | 28SS | 100% | Michela Palmieri [14%]; Alessia Gatto [14%]; Francesco Laudano [15%]; Giovanni Croce [14%]; Elisa Picilli [14%]; Marco Iannuzzi [15%]; Simon Carbone [14%] |
| 30 | 5.3 | Generazione JavaDoc | 13d | 2024-11-26 | 2024-12-12 | 29 | 100% | Alessia Gatto [33%]; Giovanni Croce [33%]; Elisa Picilli [34%] |
| 31 | 5.4 | **Gestione Profilo Utente** | 5d | 2024-11-26 | 2024-12-02 |  | 100% |  |
| 32 | 5.4.1 | GPU Persistent Layer | 5d | 2024-11-26 | 2024-12-02 | 29 | 100% | Michela Palmieri [50%]; Francesco Laudano [50%] |
| 33 | 5.4.2 | GPU Business Layer | 5d | 2024-11-26 | 2024-12-02 | 29 | 100% | Alessia Gatto [33%]; Giovanni Croce [34%]; Elisa Picilli [33%] |
| 34 | 5.4.3 | GPU Presentation Layer | 5d | 2024-11-26 | 2024-12-02 | 29 | 100% | Marco Iannuzzi [50%]; Simon Carbone [50%] |
| 35 | 5.5 | **Gestione Smaltimento Rifiuti** | 6d | 2024-11-29 | 2024-12-06 |  | 100% |  |
| 36 | 5.5.1 | GSR Persistent Layer | 6d | 2024-11-29 | 2024-12-06 | 32SS, 33SS, 34SS | 100% | Michela Palmieri [50%]; Francesco Laudano [50%] |
| 37 | 5.5.2 | GSR Business Layer | 6d | 2024-11-29 | 2024-12-06 | 32SS, 33SS, 34SS | 100% | Alessia Gatto [34%]; Giovanni Croce [33%]; Elisa Picilli [33%] |
| 38 | 5.5.3 | GSR Presentation Layer | 6d | 2024-11-29 | 2024-12-06 | 32SS, 33SS, 34SS | 100% | Marco Iannuzzi [50%]; Simon Carbone [50%] |
| 39 | 5.6 | **Gestione Eventi e Sensibilizzazione** | 8d | 2024-12-03 | 2024-12-12 |  | 100% |  |
| 40 | 5.6.1 | GES Persistent Layer | 8d | 2024-12-03 | 2024-12-12 | 32, 33FF, 34 | 100% | Michela Palmieri [50%]; Francesco Laudano [50%] |
| 41 | 5.6.2 | GES Business Layer | 8d | 2024-12-03 | 2024-12-12 | 32, 33, 34 | 100% | Alessia Gatto [34%]; Giovanni Croce [33%]; Elisa Picilli [33%] |
| 42 | 5.6.3 | GES Presentation Layer | 8d | 2024-12-03 | 2024-12-12 | 32, 33, 34 | 100% | Marco Iannuzzi [50%]; Simon Carbone [50%] |
| 43 | 6 | **Testing** | 15d | 2024-11-22 | 2024-12-12 | 27SS | 100% |  |
| 44 | 6.1 | Test Case Specification | 11d | 2024-11-22 | 2024-12-06 | 23, 24, 25, 26 | 100% | Michela Palmieri [15%]; Alessia Gatto [14%]; Francesco Laudano [14%]; Elisa Picilli [15%]; Marco Iannuzzi [14%]; Simon Carbone [14%] |
| 45 | 6.2 | Impl. ed Esec. Casi di Test | 4d | 2024-12-09 | 2024-12-12 | 44 | 100% | Michela Palmieri [14%]; Alessia Gatto [15%]; Francesco Laudano [14%]; Giovanni Croce [15%]; Elisa Picilli [14%]; Marco Iannuzzi [15%]; Simon Carbone [14%] |
| 46 | 6.3 | Test Incident Report | 4d | 2024-12-09 | 2024-12-12 | 45SS | 100% | Michela Palmieri [14%]; Alessia Gatto [15%]; Francesco Laudano [14%]; Giovanni Croce [15%]; Elisa Picilli [14%]; Marco Iannuzzi [14%]; Simon Carbone [14%] |
| 47 | 6.4 | Test Summary Report | 4d | 2024-12-09 | 2024-12-12 | 45SS | 100% | Michela Palmieri [15%]; Alessia Gatto [15%]; Francesco Laudano [14%]; Giovanni Croce [14%]; Elisa Picilli [14%]; Marco Iannuzzi [14%]; Simon Carbone [14%] |
| 48 | 7 | End Activities | 1d | 2024-12-13 | 2024-12-13 | 30, 36, 37, 38, 40, 41, 42, 46, 47 | 100% |  |
| 49 | 8 | WasteGone End | 1d | 2024-12-13 | 2024-12-13 | 43 | 100% |  |

Notes:
- 28: Configurarzione iniziale delle componenti utili per il progetto e la repository.
- 29: Suddivisione iniziale dei pacchetti di sistema. Rivedere la suddivisione in sottosistemi nel System e Object Design.
- 30: Tutti i partecipanti al progetto dovranno implementare i commenti per la JavaDoc, questo task specifica solo la generazione di essa, con la relativa scrittura del riferimento nella sezione “Class Interfaces” dell’ODD. I responsabili di questo task dovranno assicurarsi che la javadoc sia esportabile e che tutto il codice sia stato commentato.
- 32: Devono essere implementati solamente Registrazione, Login e Notificazione Utente (per consentire la personalizzazione dell’orario). Per questo layer bisogna preparare il db Firestore e salvare le entità all’interno del sistema, che dovranno essere poi legate all’application, tramite la vostra implementazione dello storage.
- 33: Devono essere implementati solamente Registrazione, Login e Notificazione Utente (per consentire la personalizzazione dell’orario). Per questo layer si dovrà implementare tutta la logica di business e completare le transazioni che sono preparate nel persistent layer, in modo da legare storage e application.
- 34: Devono essere implementati solamente Registrazione, Login e Notificazione Utente (per consentire la personalizzazione dell’orario). Per questo layer si dovranno implementare le interfacce utente e preparare la classe Activity per essere completata da chi si occupa del business layer.
- 36: Devono essere implementati solamente Visualizzazione Dettagli Rifiuti e Personalizzazione Notifiche Rifiuti. Per questo layer bisogna preparare il db Firestore e salvare le entità all’interno del sistema, che dovranno essere poi legate all’application, tramite la vostra implementazione dello storage.
- 37: Devono essere implementati solamente Visualizzazione Dettagli Rifiuti e Personalizzazione Notifiche Rifiuti. Per questo layer si dovrà implementare tutta la logica di business e completare le transazioni che sono preparate nel persistent layer, in modo da legare storage e application.
- 38: Devono essere implementati solamente Visualizzazione Dettagli Rifiuti e Personalizzazione Notifiche Rifiuti. Per questo layer si dovranno implementare le interfacce utente e preparare la classe Activity per essere completata da chi si occupa del business layer.
- 40: Devono essere implementati solamente Sezione Eventi, Prenotazione Ritiro a Casa e Visualizzazione Tasse. Per questo layer bisogna preparare il db Firestore e salvare le entità all’interno del sistema, che dovranno essere poi legate all’application, tramite la vostra implementazione dello storage.
- 41: Devono essere implementati solamente Sezione Eventi, Prenotazione Ritiro a Casa e Visualizzazione Tasse. Per questo layer si dovrà implementare tutta la logica di business e completare le transazioni che sono preparate nel persistent layer, in modo da legare storage e application.
- 42: Devono essere implementati solamente Sezione Eventi, Prenotazione Ritiro a Casa e Visualizzazione Tasse. Per questo layer si dovranno implementare le interfacce utente e preparare la classe Activity per essere completata da chi si occupa del business layer.
- 44: Specifica dei casi di test per i casi d’uso che sono stati esplicati all’interno del RAD. Ogni persona dovrà prendersi carico del proprio caso d’uso e fornire i casi di test.
- 45: Implementazione dei casi di test sviluppati ed esecuzione per rilevare failure.
- 46: In questo documento dovrà essere esposta il risultato delll’esecuzione dei casi di test.
- 47: In questo documento, si mettono sotto indagine le eventuali failure documentate nel TIR e si documenterà l’eventuale risoluzione del problema.
